# Secuencia Montaje A320_A2

Schedule from MS Project, 2025-03-12 to 2025-08-20, A marks actual dates.

## Calendars

- Estándar: Mon-Fri 09:00-13:00, 15:00-19:00; Sat-Sun off.

## Resources

| Resource |
| --- |
| Instalador 1 |
| Instalador 2 |
| Instalador 3 |
| Montador 1 |
| Montador 2 |
| Montador 3 |
| Montador 4 |
| Montador 5 |

## Schedule

| ID | WBS | Task | Type | Duration | Start | Finish | Predecessors | Complete | Remaining | Total slack | Free slack | Constraint | Resources | Work | Actual work | Código INDRA | Fecha relativa (en días) |
| --- | --- | --- | --- | --- | --- | --- | --- | --- | --- | --- | --- | --- | --- | --- | --- | --- | --- |
| 1 | 1 | Cabina en Bahia (COCKPIT) | milestone, manual | 0d | 2025-05-12 09:00 | 2025-05-12 09:00 | 6SS+43d |  |  |  |  | start no earlier than 2025-04-23 09:00 |  |  |  | 0973525010000.00 | T0+61 |
| 2 | 2 | Power Rack en Bahia | milestone, manual | 0d | 2025-05-12 09:00 | 2025-05-12 09:00 | 6SS+43d |  |  |  |  |  |  |  |  |  | T0+61 |
| 3 | 3 | Comienzo pruebas HW en cabina | milestone, manual | 0d | 2025-06-04 09:00 | 2025-06-04 09:00 |  |  |  |  |  |  |  |  |  |  | T0+84 |
| 4 | 4 | Motion + Puente ready | milestone, manual | 0d | 2025-06-19 15:00 | 2025-06-19 15:00 | 368 |  |  |  |  |  |  |  |  |  | T0+99 |
| 5 | 5 | Pruebas RTIO | milestone, manual | 0d | 2025-06-27 10:00 | 2025-06-27 10:00 | 370 |  |  |  |  |  |  |  |  |  | T0+107 |
| 6 | 6 | **Fabricacción** |  | 86.88d | 2025-03-12 09:00 A | 2025-07-10 18:00 |  |  | 86.56d | 29.12d | 0d |  |  | 3278.2h | 12h |  |  |
| 7 | 6.1 | **BASEFRAME** |  | 41.5d | 2025-03-12 09:00 | 2025-05-08 13:00 |  |  |  | 37.5d |  |  |  | 136h |  | 0973525300000.00 |  |
| 8 | 6.1.1 | MIPPDP |  | 100h | 2025-03-12 09:00 | 2025-03-28 13:00 |  |  |  | 103.5d |  |  | Montador 1 | 100h |  | 0973525300100.00 | T0+0 |
| 9 | 6.1.2 | SMOKE DETEC AND TEMP SENSOR ASSY | manual | 4h | 2025-05-05 17:00 | 2025-05-06 11:00 |  |  |  |  |  |  | Montador 3 | 4h |  | 0972828220000 | T0+54 |
| 10 | 6.1.3 | VACCUM CONTROLLER BOX | manual | 32h | 2025-05-02 15:00 | 2025-05-08 13:00 |  |  |  |  |  |  | Montador 1 | 32h |  | 0973523305100.00 | T0+51 |
| 11 | 6.2 | **ELECTRONIC EQUIP #1** |  | 32.75d | 2025-03-12 09:00 | 2025-04-25 17:00 |  |  |  | 45d | 10.25d |  |  | 574h |  | 0973525190000.00 |  |
| 12 | 6.2.1 | VDIM CARD 400HZ 5VAC EQUIPADA | milestone | 0d | 2025-03-12 09:00 | 2025-03-12 09:00 |  |  |  | 77.75d |  |  |  |  |  | 0915437020000 | T0+0 |
| 13 | 6.2.2 | PANEL CARD 1 |  | 8h | 2025-03-12 09:00 | 2025-03-12 19:00 |  |  |  | 76.75d |  | start no earlier than 2025-03-12 09:00 | Montador 2 | 8h |  | 0973530110000 | T0+0 |
| 14 | 6.2.3 | PANEL CARD 2 |  | 8h | 2025-03-13 09:00 | 2025-03-13 19:00 |  |  |  | 75.75d |  |  | Montador 2 | 8h |  | 0973530111000 | T0+1 |
| 15 | 6.2.4 | PANEL CARD 4 |  | 8h | 2025-03-14 09:00 | 2025-03-14 19:00 |  |  |  | 74.75d |  |  | Montador 2 | 8h |  | 0973530114000 | T0+2 |
| 16 | 6.2.5 | PANEL CARD 3 |  | 8h | 2025-03-17 09:00 | 2025-03-17 19:00 |  |  |  | 73.75d |  |  | Montador 2 | 8h |  | 0973530112000 | T0+5 |
| 17 | 6.2.6 | PD#1 |  | 140h | 2025-03-18 09:00 | 2025-04-10 13:00 |  |  |  | 56.25d |  | start no earlier than 2025-03-18 09:00 | Montador 2 | 140h |  | 0973525191400.00 | T0+6 |
| 18 | 6.2.7 | OVHDP |  | 140h | 2025-03-12 09:00 | 2025-04-04 13:00 |  |  |  | 60.25d |  |  | Montador 3 | 140h |  | 0973525190300.00 | T0+0 |
| 19 | 6.2.8 | PD#2 |  | 140h | 2025-03-28 15:00 | 2025-04-22 19:00 |  |  |  | 47.75d |  | start no earlier than 2025-03-28 15:00 | Montador 1 | 140h |  | 0973525191500.00 | T0+16 |
| 20 | 6.2.9 | RTIO ASSY |  | 120h | 2025-04-04 15:00 | 2025-04-25 13:00 |  |  |  | 45.25d |  | start no earlier than 2025-04-04 15:00 | Montador 3 | 120h |  | 0973525190100.00 | T0+23 |
| 21 | 6.2.10 | RTIO COM ASSY |  | 2h | 2025-04-25 15:00 | 2025-04-25 17:00 |  |  |  | 45d |  | start no earlier than 2025-04-25 15:00 | Montador 3 | 2h |  | 0973525190600.00 | T0+44 |
| 22 | 6.3 | **ELECTRONIC EQUIP #2** |  | 17.5d | 2025-04-10 15:00 A | 2025-05-05 19:00 |  | 5% | 16.55d | 64d | 4d |  |  | 220h | 12h | 0973525200000.00 |  |
| 23 | 6.3.1 | PD#3 |  | 140h | 2025-04-10 15:00 A | 2025-05-05 19:00 |  | 9% | 128h | 64d |  |  | Montador 2 | 140h | 12h | 0973525201000.00 | T0+29 |
| 24 | 6.3.2 | PDAV#1 |  | 60h | 2025-04-23 09:00 | 2025-05-02 13:00 |  |  |  | 65.5d |  |  | Montador 1 | 60h |  | 0973525201600 | T0+42 |
| 25 | 6.3.3 | AVICOM |  | 8h | 2025-04-25 17:00 | 2025-04-28 17:00 |  |  |  | 69.25d |  |  | Montador 3 | 8h |  | 0972825201800.00 | T0+44 |
| 26 | 6.3.4 | NUC TRAY ASSY |  | 8h | 2025-04-28 17:00 | 2025-04-29 17:00 |  |  |  | 68.25d |  |  | Montador 3 | 8h |  | 0972825203200.00 | T0+47 |
| 27 | 6.3.5 | MINIPC ASSY |  | 4h | 2025-04-29 17:00 | 2025-04-30 11:00 |  |  |  | 67.75d |  |  | Montador 3 | 4h |  | 0972825203400.00 | T0+48 |

| ID | WBS | Task | Duration | Start | Finish | Total slack | Free slack | Resources | Work | Código INDRA | Fecha relativa (en días) |
| --- | --- | --- | --- | --- | --- | --- | --- | --- | --- | --- | --- |
| 28 | 6.4 | **ELECTRONIC EQUIP #3** | 1.25d | 2025-04-30 11:00 | 2025-05-01 13:00 | 46.75d | 6.5d |  | 10h | 0973525210000.00 |  |
| 29 | 6.4.1 | ACTUATORS TRAY ASSY | 8h | 2025-04-30 11:00 | 2025-05-01 11:00 | 47d |  | Montador 3 | 8h | 0972823216000.00 | T0+49 |
| 30 | 6.4.2 | RELAYS TRAY ASSY | 2h | 2025-05-01 11:00 | 2025-05-01 13:00 | 46.75d |  | Montador 3 | 2h | 0972823217000.00 | T0+50 |
| 31 | 6.5 | **ELECTRONIC EQUIP #4** | 3d | 2025-05-01 15:00 | 2025-05-06 13:00 | 72.5d | 3.5d |  | 20h | 0973525220000.00 |  |
| 32 | 6.5.1 | Servo Aplifiers Unit #1 | 10h | 2025-05-01 15:00 | 2025-05-02 17:00 | 74.25d |  | Montador 3 | 10h | 0973525220400.00 | T0+50 |
| 33 | 6.5.2 | EEQ4 DIST BOX | 10h | 2025-05-02 17:00 | 2025-05-06 13:00 | 72.5d |  | Montador 3 | 10h | 0973525224000.00 | T0+51 |
| 34 | 6.6 | **CABLE SET POWER RACK** | 14d | 2025-03-12 09:00 | 2025-03-31 19:00 | 102d |  |  | 112h | 0973524430000 |  |
| 35 | 6.6.1 | W502 | 4h | 2025-03-12 09:00 | 2025-03-12 13:00 | 115.5d |  | Montador 4 | 4h | 0973545050200 | T0+0 |
| 36 | 6.6.2 | W503 | 4h | 2025-03-12 15:00 | 2025-03-12 19:00 | 115d |  | Montador 4 | 4h | 0973545050300 | T0+0 |
| 37 | 6.6.3 | W504 | 4h | 2025-03-13 09:00 | 2025-03-13 13:00 | 114.5d |  | Montador 4 | 4h | 0973545050400 | T0+1 |
| 38 | 6.6.4 | W505 | 4h | 2025-03-13 15:00 | 2025-03-13 19:00 | 114d |  | Montador 4 | 4h | 0973545050500 | T0+1 |
| 39 | 6.6.5 | W506 | 4h | 2025-03-14 09:00 | 2025-03-14 13:00 | 113.5d |  | Montador 4 | 4h | 0973545050600 | T0+2 |
| 40 | 6.6.6 | W507 | 4h | 2025-03-14 15:00 | 2025-03-14 19:00 | 113d |  | Montador 4 | 4h | 0973545050700 | T0+2 |
| 41 | 6.6.7 | W508 | 4h | 2025-03-17 09:00 | 2025-03-17 13:00 | 112.5d |  | Montador 4 | 4h | 0973545050800 | T0+5 |
| 42 | 6.6.8 | W509 | 4h | 2025-03-17 15:00 | 2025-03-17 19:00 | 112d |  | Montador 4 | 4h | 0973545050900 | T0+5 |
| 43 | 6.6.9 | W511 | 4h | 2025-03-18 09:00 | 2025-03-18 13:00 | 111.5d |  | Montador 4 | 4h | 0973545051100 | T0+6 |
| 44 | 6.6.10 | W512 | 4h | 2025-03-18 15:00 | 2025-03-18 19:00 | 111d |  | Montador 4 | 4h | 0973545051200 | T0+6 |
| 45 | 6.6.11 | W513 | 4h | 2025-03-19 09:00 | 2025-03-19 13:00 | 110.5d |  | Montador 4 | 4h | 0973545051300 | T0+7 |
| 46 | 6.6.12 | W514 | 4h | 2025-03-19 15:00 | 2025-03-19 19:00 | 110d |  | Montador 4 | 4h | 0973545051400 | T0+7 |
| 47 | 6.6.13 | W515 | 4h | 2025-03-20 09:00 | 2025-03-20 13:00 | 109.5d |  | Montador 4 | 4h | 0973545051500 | T0+8 |
| 48 | 6.6.14 | W516 | 4h | 2025-03-20 15:00 | 2025-03-20 19:00 | 109d |  | Montador 4 | 4h | 0973545051600 | T0+8 |
| 49 | 6.6.15 | W517 | 4h | 2025-03-21 09:00 | 2025-03-21 13:00 | 108.5d |  | Montador 4 | 4h | 0973545051700 | T0+9 |
| 50 | 6.6.16 | W518 | 4h | 2025-03-21 15:00 | 2025-03-21 19:00 | 108d |  | Montador 4 | 4h | 0973545051800 | T0+9 |
| 51 | 6.6.17 | W519 | 4h | 2025-03-24 09:00 | 2025-03-24 13:00 | 107.5d |  | Montador 4 | 4h | 0973545051900 | T0+12 |
| 52 | 6.6.18 | W522 | 4h | 2025-03-24 15:00 | 2025-03-24 19:00 | 107d |  | Montador 4 | 4h | 0973545052200 | T0+12 |
| 53 | 6.6.19 | W523 | 4h | 2025-03-25 09:00 | 2025-03-25 13:00 | 106.5d |  | Montador 4 | 4h | 0973545052300 | T0+13 |
| 54 | 6.6.20 | W524 | 4h | 2025-03-25 15:00 | 2025-03-25 19:00 | 106d |  | Montador 4 | 4h | 0973545052400 | T0+13 |
| 55 | 6.6.21 | W526 | 4h | 2025-03-26 09:00 | 2025-03-26 13:00 | 105.5d |  | Montador 4 | 4h | 0973545052600 | T0+14 |
| 56 | 6.6.22 | W527 | 4h | 2025-03-26 15:00 | 2025-03-26 19:00 | 105d |  | Montador 4 | 4h | 0973545052700 | T0+14 |
| 57 | 6.6.23 | W528 | 4h | 2025-03-27 09:00 | 2025-03-27 13:00 | 104.5d |  | Montador 4 | 4h | 0973545052800 | T0+15 |
| 58 | 6.6.24 | W538 | 4h | 2025-03-27 15:00 | 2025-03-27 19:00 | 104d |  | Montador 4 | 4h | 0973545053800 | T0+15 |
| 59 | 6.6.25 | W541 | 4h | 2025-03-28 09:00 | 2025-03-28 13:00 | 103.5d |  | Montador 4 | 4h | 0973545054100 | T0+16 |
| 60 | 6.6.26 | W542 | 4h | 2025-03-28 15:00 | 2025-03-28 19:00 | 103d |  | Montador 4 | 4h | 0973545054200 | T0+16 |
| 61 | 6.6.27 | W543 | 4h | 2025-03-31 09:00 | 2025-03-31 13:00 | 102.5d |  | Montador 4 | 4h | 0973545054300 | T0+19 |
| 62 | 6.6.28 | W544 | 4h | 2025-03-31 15:00 | 2025-03-31 19:00 | 102d |  | Montador 4 | 4h | 0973545054400 | T0+19 |

| ID | WBS | Task | Duration | Start | Finish | Total slack | Constraint | Resources | Work | Código INDRA | Fecha relativa (en días) |
| --- | --- | --- | --- | --- | --- | --- | --- | --- | --- | --- | --- |
| 63 | 6.7 | **CABLE SET EEQ#1** | 2.5d | 2025-04-01 09:00 | 2025-04-03 13:00 | 99.5d |  |  | 20h | 0973524190000 |  |
| 64 | 6.7.1 | PWR OVHDP | 4h | 2025-04-01 09:00 | 2025-04-01 13:00 | 101.5d |  | Montador 4 | 4h | 0973544190100 | T0+20 |
| 65 | 6.7.2 | PWR RTIO ASSY | 4h | 2025-04-01 15:00 | 2025-04-01 19:00 | 101d |  | Montador 4 | 4h | 0973544190200 | T0+20 |
| 66 | 6.7.3 | PWR PD#1 | 4h | 2025-04-02 09:00 | 2025-04-02 13:00 | 100.5d |  | Montador 4 | 4h | 0973544190300 | T0+21 |
| 67 | 6.7.4 | PWR PD#2 | 4h | 2025-04-02 15:00 | 2025-04-02 19:00 | 100d |  | Montador 4 | 4h | 0973544190400 | T0+21 |
| 68 | 6.7.5 | PWR MIPPDP | 4h | 2025-04-03 09:00 | 2025-04-03 13:00 | 99.5d |  | Montador 4 | 4h | 0973544190500 | T0+22 |
| 69 | 6.8 | **CABLE SET EEQ#2** | 3d | 2025-04-03 15:00 | 2025-04-08 13:00 | 96.5d |  |  | 24h | 0973524200000 |  |
| 70 | 6.8.1 | PWR PD#3 | 4h | 2025-04-03 15:00 | 2025-04-03 19:00 | 99d |  | Montador 4 | 4h | 0973544200100 | T0+22 |
| 71 | 6.8.2 | PWR IOS#1 | 4h | 2025-04-04 09:00 | 2025-04-04 13:00 | 98.5d |  | Montador 4 | 4h | 0973544200200 | T0+23 |
| 72 | 6.8.3 | A0202W06 | 4h | 2025-04-04 15:00 | 2025-04-04 19:00 | 98d |  | Montador 4 | 4h | 0972844204506 | T0+23 |
| 73 | 6.8.4 | PWR IOS#2 TFT1 | 4h | 2025-04-07 09:00 | 2025-04-07 13:00 | 97.5d |  | Montador 4 | 4h | 0973544201200 | T0+26 |
| 74 | 6.8.5 | A0202W13 | 4h | 2025-04-07 15:00 | 2025-04-07 19:00 | 97d |  | Montador 4 | 4h | 0973544201300 | T0+26 |
| 75 | 6.8.6 | A0202W14 | 4h | 2025-04-08 09:00 | 2025-04-08 13:00 | 96.5d |  | Montador 4 | 4h | 0973544201400 | T0+27 |
| 76 | 6.9 | **CABLE SET PD#1** | 12.5d | 2025-04-08 15:00 | 2025-04-24 19:00 | 84d |  |  | 100h | 0973524191400 |  |
| 77 | 6.9.1 | W002 - CABLE PD/CABINA | 20h | 2025-04-08 15:00 | 2025-04-10 19:00 | 94d |  | Montador 4 | 20h | 0973545000200 | T0+27 |
| 78 | 6.9.2 | W004 - CABLE PD/CABINA | 20h | 2025-04-11 09:00 | 2025-04-15 13:00 | 91.5d |  | Montador 4 | 20h | 0973545000400 | T0+30 |
| 79 | 6.9.3 | W005 - CABLE PD/CABINA | 20h | 2025-04-15 15:00 | 2025-04-17 19:00 | 89d |  | Montador 4 | 20h | 0973545000500 | T0+34 |
| 80 | 6.9.4 | W006 - CABLE PD/CABINA | 20h | 2025-04-18 09:00 | 2025-04-22 13:00 | 86.5d |  | Montador 4 | 20h | 0973545000600 | T0+37 |
| 81 | 6.9.5 | W007 - CABLE PD/CABINA | 20h | 2025-04-22 15:00 | 2025-04-24 19:00 | 84d |  | Montador 4 | 20h | 0973545000700 | T0+41 |
| 82 | 6.10 | **CABLE SET PD#2** | 10d | 2025-04-25 09:00 | 2025-05-08 19:00 | 74d |  |  | 80h | 0973524191500 |  |
| 83 | 6.10.1 | W010 - CABLE PD/CABINA | 20h | 2025-04-25 09:00 | 2025-04-29 13:00 | 81.5d |  | Montador 4 | 20h | 0973545001000 | T0+44 |
| 84 | 6.10.2 | W012 - CABLE PD/CABINA | 20h | 2025-04-29 15:00 | 2025-05-01 19:00 | 79d |  | Montador 4 | 20h | 0973545001200 | T0+48 |
| 85 | 6.10.3 | W013 - CABLE PD/CABINA | 20h | 2025-05-02 09:00 | 2025-05-06 13:00 | 76.5d |  | Montador 4 | 20h | 0973545001300 | T0+51 |
| 86 | 6.10.4 | W014 - CABLE PD/CABINA | 20h | 2025-05-06 15:00 | 2025-05-08 19:00 | 74d | start no earlier than 2025-05-06 15:00 | Montador 4 | 20h | 0973545001400 | T0+55 |

| ID | WBS | Task | Duration | Start | Finish | Total slack | Constraint | Resources | Work | Código INDRA | Fecha relativa (en días) |
| --- | --- | --- | --- | --- | --- | --- | --- | --- | --- | --- | --- |
| 87 | 6.11 | **CABLE SET OVHDP** | 15d | 2025-05-06 09:00 | 2025-05-26 19:00 | 62d |  |  | 120h | 0973524190300 |  |
| 88 | 6.11.1 | W022 - CABLE PD/CABINA | 20h | 2025-05-06 09:00 | 2025-05-08 13:00 | 74.5d |  | Montador 2 | 20h | 0973545002300 | T0+55 |
| 89 | 6.11.2 | W023 - CABLE PD/CABINA | 20h | 2025-05-08 15:00 | 2025-05-12 19:00 | 72d |  | Montador 2 | 20h | 0973545002200 | T0+57 |
| 90 | 6.11.3 | W024 - CABLE PD/CABINA | 20h | 2025-05-13 09:00 | 2025-05-15 13:00 | 69.5d |  | Montador 2 | 20h | 0973545002400 | T0+62 |
| 91 | 6.11.4 | W025 - CABLE PD/CABINA | 20h | 2025-05-15 15:00 | 2025-05-19 19:00 | 67d |  | Montador 2 | 20h | 0973545002500 | T0+64 |
| 92 | 6.11.5 | W026 - CABLE PD/CABINA | 20h | 2025-05-20 09:00 | 2025-05-22 13:00 | 64.5d |  | Montador 2 | 20h | 0973545002600 | T0+69 |
| 93 | 6.11.6 | W030 - CABLE PD/CABINA | 20h | 2025-05-22 15:00 | 2025-05-26 19:00 | 62d | start no earlier than 2025-05-22 15:00 | Montador 2 | 20h | 0973545003000 | T0+71 |
| 94 | 6.12 | **CABLE SET POWER EEQ#1** | 1.38d | 2025-05-08 15:00 | 2025-05-09 18:00 | 73.12d |  |  | 11h | 0973524190100 |  |
| 95 | 6.12.1 | W421 - FC | 3h | 2025-05-08 15:00 | 2025-05-08 18:00 | 74.12d |  | Montador 1 | 3h | 0973545042100 | T0+57 |
| 96 | 6.12.2 | W423 - TRANSPORT DELAY | 3h | 2025-05-08 18:00 | 2025-05-09 11:00 | 73.75d |  | Montador 1 | 3h | 0972845042300 | T0+57 |
| 97 | 6.12.3 | W424 - DISPLAY PHD | 2h | 2025-05-09 11:00 | 2025-05-09 13:00 | 73.5d |  | Montador 1 | 2h | 0972845042400 | T0+58 |
| 98 | 6.12.4 | W425 - DU PHD | 3h | 2025-05-09 15:00 | 2025-05-09 18:00 | 73.12d |  | Montador 1 | 3h | 0972845042500 | T0+58 |
| 99 | 6.13 | **CABLE SET MIP** | 18d | 2025-05-09 18:00 | 2025-06-04 18:00 | 55.12d |  |  | 144h | 0973524300100 |  |
| 100 | 6.13.1 | W036 - CABLE PD/CABINA | 18h | 2025-05-09 18:00 | 2025-05-14 10:00 | 70.88d |  | Montador 1 | 18h | 0973545003600 | T0+58 |
| 101 | 6.13.2 | W037 - CABLE PD/CABINA | 18h | 2025-05-14 10:00 | 2025-05-16 12:00 | 68.62d |  | Montador 1 | 18h | 0973545003700 | T0+63 |
| 102 | 6.13.3 | W038 - CABLE PD/CABINA | 18h | 2025-05-16 12:00 | 2025-05-20 16:00 | 66.38d |  | Montador 1 | 18h | 0973545003800 | T0+65 |
| 103 | 6.13.4 | W039 - CABLE PD/CABINA | 18h | 2025-05-20 16:00 | 2025-05-22 18:00 | 64.12d |  | Montador 1 | 18h | 0973545003900 | T0+69 |
| 104 | 6.13.5 | W040 - CABLE PD/CABINA | 18h | 2025-05-22 18:00 | 2025-05-27 10:00 | 61.88d | start no earlier than 2025-05-22 18:00 | Montador 1 | 18h | 0973545004000 | T0+71 |
| 105 | 6.13.6 | W041 - CABLE PD/CABINA | 18h | 2025-05-27 10:00 | 2025-05-29 12:00 | 59.62d | start no earlier than 2025-05-27 10:00 | Montador 1 | 18h | 0973545004100 | T0+76 |
| 106 | 6.13.7 | W042 - CABLE PD/CABINA | 18h | 2025-05-29 12:00 | 2025-06-02 16:00 | 57.38d | start no earlier than 2025-05-29 12:00 | Montador 1 | 18h | 0973545004200 | T0+78 |
| 107 | 6.13.8 | W044 - CABLE PD/CABINA | 18h | 2025-06-02 16:00 | 2025-06-04 18:00 | 55.12d | start no earlier than 2025-06-02 16:00 | Montador 1 | 18h | 0973545004400 | T0+82 |
| 108 | 6.14 | **CABLE SET BASEFRAME** | 2.75d | 2025-05-09 09:00 | 2025-05-13 17:00 | 71.25d |  |  | 22h | 0973524300000 |  |
| 109 | 6.14.1 | PWR IOS CONSOLE#1 TFT1 | 3h | 2025-05-09 09:00 | 2025-05-09 12:00 | 73.62d |  | Montador 4 | 3h | 0973544300100 | T0+58 |
| 110 | 6.14.2 | PWR IOS CONSOLE#1 TFT2 | 3h | 2025-05-09 12:00 | 2025-05-09 17:00 | 73.25d |  | Montador 4 | 3h | 0973544300200 | T0+58 |
| 111 | 6.14.3 | USB IOS CONSOLE#1 EXT TFT1 | 2h | 2025-05-09 17:00 | 2025-05-09 19:00 | 73d |  | Montador 4 | 2h | 0973544300300 | T0+58 |
| 112 | 6.14.4 | USB IOS CONSOLE#1 EXT TFT1 | 2h | 2025-05-12 09:00 | 2025-05-12 11:00 | 72.75d |  | Montador 4 | 2h | 0973544300300 | T0+61 |
| 113 | 6.14.5 | USB IOS CONSOLE#1 EXT TFT2 | 2h | 2025-05-12 11:00 | 2025-05-12 13:00 | 72.5d |  | Montador 4 | 2h | 0973544300400 | T0+61 |
| 114 | 6.14.6 | USB IOS CONSOLE#1 EXT TFT2 | 2h | 2025-05-12 15:00 | 2025-05-12 17:00 | 72.25d |  | Montador 4 | 2h | 0973544300400 | T0+61 |
| 115 | 6.14.7 | A04W20 | 4h | 2025-05-12 17:00 | 2025-05-13 11:00 | 71.75d |  | Montador 4 | 4h | 0973544300500 | T0+61 |
| 116 | 6.14.8 | A04W21 | 4h | 2025-05-13 11:00 | 2025-05-13 17:00 | 71.25d |  | Montador 4 | 4h | 0973544300600 | T0+62 |

| ID | WBS | Task | Duration | Start | Finish | Total slack | Resources | Work | Código INDRA | Fecha relativa (en días) |
| --- | --- | --- | --- | --- | --- | --- | --- | --- | --- | --- |
| 117 | 6.15 | **CABLE SET CAN** | 9.62d | 2025-05-06 15:00 | 2025-05-20 10:00 | 66.88d |  | 77h | 0973524020000 |  |
| 118 | 6.15.1 | W901 - CAN1 A | 2h | 2025-05-06 15:00 | 2025-05-06 17:00 | 76.25d | Montador 3 | 2h | 0973545020201 | T0+55 |
| 119 | 6.15.2 | W902 - CAN2 A | 2h | 2025-05-06 17:00 | 2025-05-06 19:00 | 76d | Montador 3 | 2h | 0973545020202 | T0+55 |
| 120 | 6.15.3 | W903 - CAN3 A | 2h | 2025-05-07 09:00 | 2025-05-07 11:00 | 75.75d | Montador 3 | 2h | 0973545020103 | T0+56 |
| 121 | 6.15.4 | W904 - CAN4 A | 2h | 2025-05-07 11:00 | 2025-05-07 13:00 | 75.5d | Montador 3 | 2h | 0973545020104 | T0+56 |
| 122 | 6.15.5 | W905 - CAN5 A | 2h | 2025-05-07 15:00 | 2025-05-07 17:00 | 75.25d | Montador 3 | 2h | 0973545020105 | T0+56 |
| 123 | 6.15.6 | W906 - CAN6 A | 2h | 2025-05-07 17:00 | 2025-05-07 19:00 | 75d | Montador 3 | 2h | 0973545020206 | T0+56 |
| 124 | 6.15.7 | W907 - CAN7 A | 2h | 2025-05-08 09:00 | 2025-05-08 11:00 | 74.75d | Montador 3 | 2h | 0973545020107 | T0+57 |
| 125 | 6.15.8 | W908 - CAN8 A | 2h | 2025-05-08 11:00 | 2025-05-08 13:00 | 74.5d | Montador 3 | 2h | 0973545020208 | T0+57 |
| 126 | 6.15.9 | W909 - CAN9 A | 2h | 2025-05-08 15:00 | 2025-05-08 17:00 | 74.25d | Montador 3 | 2h | 0973545020209 | T0+57 |
| 127 | 6.15.10 | W910 - CAN10 A | 2h | 2025-05-08 17:00 | 2025-05-08 19:00 | 74d | Montador 3 | 2h | 0973545020300 | T0+57 |
| 128 | 6.15.11 | W913 - CAN3 B | 2h | 2025-05-09 09:00 | 2025-05-09 11:00 | 73.75d | Montador 3 | 2h | 0973545020413 | T0+58 |
| 129 | 6.15.12 | W914 - CAN4 B | 2h | 2025-05-09 11:00 | 2025-05-09 13:00 | 73.5d | Montador 3 | 2h | 0973545020414 | T0+58 |
| 130 | 6.15.13 | W915 - CAN5 B | 2h | 2025-05-09 15:00 | 2025-05-09 17:00 | 73.25d | Montador 3 | 2h | 0973545020415 | T0+58 |
| 131 | 6.15.14 | W917 - CAN7 B | 2h | 2025-05-09 17:00 | 2025-05-09 19:00 | 73d | Montador 3 | 2h | 0973545020417 | T0+58 |
| 132 | 6.15.15 | W918 - CAN8 B | 2h | 2025-05-12 09:00 | 2025-05-12 11:00 | 72.75d | Montador 3 | 2h | 0973545020118 | T0+61 |
| 133 | 6.15.16 | W920 - CAN10 B | 2h | 2025-05-12 11:00 | 2025-05-12 13:00 | 72.5d | Montador 3 | 2h | 0973545020520 | T0+61 |
| 134 | 6.15.17 | W923 - CAN3 C | 2h | 2025-05-12 15:00 | 2025-05-12 17:00 | 72.25d | Montador 3 | 2h | 0973545020423 | T0+61 |
| 135 | 6.15.18 | W924 - CAN4 C | 2h | 2025-05-12 17:00 | 2025-05-12 19:00 | 72d | Montador 3 | 2h | 0973545020424 | T0+61 |
| 136 | 6.15.19 | W925 - CAN5 C | 2h | 2025-05-13 09:00 | 2025-05-13 11:00 | 71.75d | Montador 3 | 2h | 0973545020425 | T0+62 |
| 137 | 6.15.20 | W927 - CAN7 C | 2h | 2025-05-13 11:00 | 2025-05-13 13:00 | 71.5d | Montador 3 | 2h | 0973545020427 | T0+62 |
| 138 | 6.15.21 | W929 - CAN9 C | 2h | 2025-05-13 15:00 | 2025-05-13 17:00 | 71.25d | Montador 3 | 2h | 0973545092900 | T0+62 |
| 139 | 6.15.22 | W930 - CAN10 C | 2h | 2025-05-13 17:00 | 2025-05-13 19:00 | 71d | Montador 3 | 2h | 0973545020530 | T0+62 |
| 140 | 6.15.23 | W933 - CAN3 D | 2h | 2025-05-14 09:00 | 2025-05-14 11:00 | 70.75d | Montador 3 | 2h | 0973545020433 | T0+63 |
| 141 | 6.15.24 | W934 - CAN4 D | 2h | 2025-05-14 11:00 | 2025-05-14 13:00 | 70.5d | Montador 3 | 2h | 0973545020434 | T0+63 |
| 142 | 6.15.25 | W935 - CAN5 D | 2h | 2025-05-14 15:00 | 2025-05-14 17:00 | 70.25d | Montador 3 | 2h | 0973545020435 | T0+63 |
| 143 | 6.15.26 | W937 - CAN7 D | 2h | 2025-05-14 17:00 | 2025-05-14 19:00 | 70d | Montador 3 | 2h | 0973545020437 | T0+63 |
| 144 | 6.15.27 | W940 - CAN10 D | 2h | 2025-05-15 09:00 | 2025-05-15 11:00 | 69.75d | Montador 3 | 2h | 0973545020540 | T0+64 |
| 145 | 6.15.28 | W945 - CAN5 E | 2h | 2025-05-15 11:00 | 2025-05-15 13:00 | 69.5d | Montador 3 | 2h | 0973545020445 | T0+64 |
| 146 | 6.15.29 | W947 - CAN7 E | 2h | 2025-05-15 15:00 | 2025-05-15 17:00 | 69.25d | Montador 3 | 2h | 0973545020447 | T0+64 |
| 147 | 6.15.30 | W955 - CAN5 F | 2h | 2025-05-15 17:00 | 2025-05-15 19:00 | 69d | Montador 3 | 2h | 0973545020455 | T0+64 |
| 148 | 6.15.31 | W957 - CAN7 F | 2h | 2025-05-16 09:00 | 2025-05-16 11:00 | 68.75d | Montador 3 | 2h | 0973545020457 | T0+65 |
| 149 | 6.15.32 | W967 - CAN7 G | 2h | 2025-05-16 11:00 | 2025-05-16 13:00 | 68.5d | Montador 3 | 2h | 0973545020467 | T0+65 |
| 150 | 6.15.33 | W977 - CAN7 H | 2h | 2025-05-16 15:00 | 2025-05-16 17:00 | 68.25d | Montador 3 | 2h | 0973545020477 | T0+65 |
| 151 | 6.15.34 | W981 - CAN1 T | 2h | 2025-05-16 17:00 | 2025-05-16 19:00 | 68d | Montador 3 | 2h | 0973545020881 | T0+65 |
| 152 | 6.15.35 | W982 - CAN2 T | 2h | 2025-05-19 09:00 | 2025-05-19 11:00 | 67.75d | Montador 3 | 2h | 0973545020882 | T0+68 |
| 153 | 6.15.36 | W983 - CAN3 T | 1h | 2025-05-19 11:00 | 2025-05-19 12:00 | 67.62d | Montador 3 | 1h | 0973545020683 | T0+68 |
| 154 | 6.15.37 | W984 - CAN4 T | 1h | 2025-05-19 12:00 | 2025-05-19 13:00 | 67.5d | Montador 3 | 1h | 0973545020684 | T0+68 |
| 155 | 6.15.38 | W985 - CAN5 T | 1h | 2025-05-19 15:00 | 2025-05-19 16:00 | 67.38d | Montador 3 | 1h | 0973545020685 | T0+68 |
| 156 | 6.15.39 | W986 - CAN6 T | 1h | 2025-05-19 16:00 | 2025-05-19 17:00 | 67.25d | Montador 3 | 1h | 0973545020886 | T0+68 |
| 157 | 6.15.40 | W987 - CAN7 T | 1h | 2025-05-19 17:00 | 2025-05-19 18:00 | 67.12d | Montador 3 | 1h | 0973545020687 | T0+68 |
| 158 | 6.15.41 | W988 - CAN8 T | 1h | 2025-05-19 18:00 | 2025-05-19 19:00 | 67d | Montador 3 | 1h | 0973545020688 | T0+68 |
| 159 | 6.15.42 | W990 - CAN10 T | 1h | 2025-05-20 09:00 | 2025-05-20 10:00 | 66.88d | Montador 3 | 1h | 0973545020700 | T0+69 |

| ID | WBS | Task | Duration | Start | Finish | Total slack | Constraint | Resources | Work | Código INDRA | Fecha relativa (en días) |
| --- | --- | --- | --- | --- | --- | --- | --- | --- | --- | --- | --- |
| 160 | 6.16 | **CABLE SET AVICOM** | 1.5d | 2025-05-13 17:00 | 2025-05-15 11:00 | 69.75d |  |  | 12h | 973524201800 |  |
| 161 | 6.16.1 | W081 - CABLE TAv/AvDP | 4h | 2025-05-13 17:00 | 2025-05-14 11:00 | 70.75d |  | Montador 4 | 4h | 0972845008001 | T0+62 |
| 162 | 6.16.2 | W082 - CABLE TAv/AvDP | 4h | 2025-05-14 11:00 | 2025-05-14 17:00 | 70.25d |  | Montador 4 | 4h | 0972845008002 | T0+63 |
| 163 | 6.16.3 | W083 - CABLE TAv/AvDP | 4h | 2025-05-14 17:00 | 2025-05-15 11:00 | 69.75d |  | Montador 4 | 4h | 0972845008003 | T0+63 |
| 164 | 6.17 | **CABLE SET AVDP** | 3.75d | 2025-05-15 11:00 | 2025-05-20 19:00 | 66d |  |  | 30h | 0973524201600 |  |
| 165 | 6.17.1 | W091 - CABLE AvDP/PD | 10h | 2025-05-15 11:00 | 2025-05-16 13:00 | 68.5d |  | Montador 4 | 10h | 0973545009100 | T0+64 |
| 166 | 6.17.2 | W092 - CABLE AvDP/PD | 10h | 2025-05-16 15:00 | 2025-05-19 17:00 | 67.25d |  | Montador 4 | 10h | 973545009200 | T0+65 |
| 167 | 6.17.3 | W093 - CABLE AvDP/PD | 10h | 2025-05-19 17:00 | 2025-05-20 19:00 | 66d |  | Montador 4 | 10h | 0973545009300 | T0+68 |
| 168 | 6.18 | **CABLE SET VIDEO DISPLAY UNITS** | 2.15d | 2025-05-20 10:00 | 2025-05-22 11:12 | 64.72d |  |  | 1.6h | 0973524070100 |  |
| 169 | 6.18.1 | W801 - VIDEO DU FO OUTB | 0.2h | 2025-05-20 10:00 | 2025-05-20 10:12 | 66.85d |  | Montador 3 | 0.2h | 0973544080001 | T0+69 |
| 170 | 6.18.2 | W802 - VIDEO DU FO INBD | 0.2h | 2025-05-20 10:24 | 2025-05-20 10:36 | 66.8d | start no earlier than 2025-05-20 10:24 | Montador 3 | 0.2h | 0973544080002 | T0+69 |
| 171 | 6.18.3 | W803 - VIDEO UPPER CENTER | 0.2h | 2025-05-20 10:36 | 2025-05-20 10:48 | 66.78d | start no earlier than 2025-05-20 10:36 | Montador 3 | 0.2h | 0973544080003 | T0+69 |
| 172 | 6.18.4 | W804 - VIDEO LOWER CENTER | 0.2h | 2025-05-20 12:00 | 2025-05-20 12:12 | 66.6d | start no earlier than 2025-05-20 12:00 | Montador 3 | 0.2h | 0973544080004 | T0+69 |
| 173 | 6.18.5 | W805 - VIDEO DU CAPT OUTB | 0.2h | 2025-05-22 11:00 | 2025-05-22 11:12 | 64.72d | start no earlier than 2025-05-22 11:00 | Montador 3 | 0.2h | 0973544080005 | T0+71 |
| 174 | 6.18.6 | W806 - VIDEO DU CAPT INBD | 0.2h | 2025-05-20 10:48 | 2025-05-20 11:00 | 66.75d | start no earlier than 2025-05-20 10:48 | Montador 3 | 0.2h | 0973544080006 | T0+69 |
| 175 | 6.18.7 | W807 - VIDEO MCDU1 | 0.2h | 2025-05-20 11:12 | 2025-05-20 11:24 | 66.7d | start no earlier than 2025-05-20 11:12 | Montador 3 | 0.2h | 0973544080007 | T0+69 |
| 176 | 6.18.8 | W808 - VIDEO MCDU2 | 0.2h | 2025-05-20 10:12 | 2025-05-20 10:24 | 66.83d | start no earlier than 2025-05-20 10:12 | Montador 3 | 0.2h | 0973544080008 | T0+69 |
| 177 | 6.19 | **CABLE SET ETH DISPLAY UNITS** | 2d | 2025-05-20 11:00 | 2025-05-22 11:00 | 64.75d |  |  | 1.6h | 0973524070200 |  |
| 178 | 6.19.1 | W811 - LAN DU CAPT OUTBD | 0.2h | 2025-05-20 11:24 | 2025-05-20 11:36 | 66.67d | start no earlier than 2025-05-20 11:24 | Montador 3 | 0.2h | 0973545081001 | T0+69 |
| 179 | 6.19.2 | W812 - LAN DU CAPT INBD | 0.2h | 2025-05-20 11:36 | 2025-05-20 11:48 | 66.65d | start no earlier than 2025-05-20 11:36 | Montador 3 | 0.2h | 0973545081002 | T0+69 |
| 180 | 6.19.3 | W813 - LAN DU UPPER CENTER | 0.2h | 2025-05-20 11:48 | 2025-05-20 12:00 | 66.62d | start no earlier than 2025-05-20 11:48 | Montador 3 | 0.2h | 0973545081003 | T0+69 |
| 181 | 6.19.4 | W814 - LAN DU LOWER CENTER | 0.2h | 2025-05-20 11:00 | 2025-05-20 11:12 | 66.72d | start no earlier than 2025-05-20 11:00 | Montador 3 | 0.2h | 0973545081004 | T0+69 |
| 182 | 6.19.5 | W815 - LAN DU FO OUTBD | 0.2h | 2025-05-22 10:24 | 2025-05-22 10:36 | 64.8d | start no earlier than 2025-05-22 10:24 | Montador 3 | 0.2h | 0973545081005 | T0+71 |
| 183 | 6.19.6 | W816 - LAN DU FO INBD | 0.2h | 2025-05-22 10:12 | 2025-05-22 10:24 | 64.83d | start no earlier than 2025-05-22 10:12 | Montador 3 | 0.2h | 0973545081006 | T0+71 |
| 184 | 6.19.7 | W817 - LAN MCDU1 | 0.2h | 2025-05-22 10:36 | 2025-05-22 10:48 | 64.78d | start no earlier than 2025-05-22 10:36 | Montador 3 | 0.2h | 0973545081007 | T0+71 |
| 185 | 6.19.8 | W818 - LAN MCDU2 | 0.2h | 2025-05-22 10:48 | 2025-05-22 11:00 | 64.75d | start no earlier than 2025-05-22 10:48 | Montador 3 | 0.2h | 0973545081008 | T0+71 |

| ID | WBS | Task | Duration | Start | Finish | Total slack | Constraint | Resources | Work | Código INDRA | Fecha relativa (en días) |
| --- | --- | --- | --- | --- | --- | --- | --- | --- | --- | --- | --- |
| 186 | 6.20 | **CABLE SET PWR DISPLAY UNITS** | 8.35d | 2025-05-20 12:12 | 2025-05-30 17:00 | 58.25d |  |  | 16h | 0973524070300 |  |
| 187 | 6.20.1 | W821 - PWR DU CAPT OUTBD | 2h | 2025-05-21 10:12 | 2025-05-21 12:12 | 65.6d | start no earlier than 2025-05-21 10:12 | Montador 3 | 2h | 0973545082001 | T0+70 |
| 188 | 6.20.2 | W822 - PWR DU CAPT INBD | 2h | 2025-05-21 16:12 | 2025-05-21 18:12 | 65.1d | start no earlier than 2025-05-21 16:12 | Montador 3 | 2h | 0973545082002 | T0+70 |
| 189 | 6.20.3 | W823 - PWR DU UPPER CENTER | 2h | 2025-05-26 09:00 | 2025-05-26 11:00 | 62.75d | start no earlier than 2025-05-26 09:00 | Montador 3 | 2h | 0973545082003 | T0+75 |
| 190 | 6.20.4 | W824 - PWR DU LOWER CENTER | 2h | 2025-05-21 12:12 | 2025-05-21 16:12 | 65.35d | start no earlier than 2025-05-21 12:12 | Montador 3 | 2h | 0973545082004 | T0+70 |
| 191 | 6.20.5 | W825 - PWR DU FO OUTBD | 2h | 2025-05-20 12:12 | 2025-05-20 16:12 | 66.35d | start no earlier than 2025-05-20 12:12 | Montador 3 | 2h | 0973545082005 | T0+69 |
| 192 | 6.20.6 | W826 - PWR DU FO INBD | 2h | 2025-05-30 15:00 | 2025-05-30 17:00 | 58.25d | start no earlier than 2025-05-30 15:00 | Montador 4 | 2h | 0973545082006 | T0+79 |
| 193 | 6.20.7 | W827 | 2h | 2025-05-20 18:12 | 2025-05-21 10:12 | 65.85d | start no earlier than 2025-05-20 18:12 | Montador 3 | 2h | 0973545082007 | T0+69 |
| 194 | 6.20.8 | W828 - PWR MCDU2 | 2h | 2025-05-21 18:12 | 2025-05-22 10:12 | 64.85d | start no earlier than 2025-05-21 18:12 | Montador 3 | 2h | 0973545082008 | T0+70 |
| 195 | 6.21 | **CABLE SET COMMS DP** | 3d | 2025-05-21 09:00 | 2025-05-23 19:00 | 63d |  |  | 24h | 0973524212100 |  |
| 196 | 6.21.1 | W400 - COMMS | 8h | 2025-05-21 09:00 | 2025-05-21 19:00 | 65d |  | Montador 4 | 8h | 0973545040000 | T0+70 |
| 197 | 6.21.2 | W401 - COMMS | 8h | 2025-05-22 09:00 | 2025-05-22 19:00 | 64d |  | Montador 4 | 8h | 0973545040100 | T0+71 |
| 198 | 6.21.3 | W402 - COMMS | 8h | 2025-05-23 09:00 | 2025-05-23 19:00 | 63d |  | Montador 4 | 8h | 0973545040200 | T0+72 |
| 199 | 6.22 | **CABLE SET DACS EEQ#3** | 6d | 2025-05-26 09:00 | 2025-06-02 19:00 | 57d |  |  | 46h | 0973524210200 |  |
| 200 | 6.22.1 | A0203W51 - BUNDLE | 2h | 2025-05-26 09:00 | 2025-05-26 11:00 | 62.75d |  | Montador 4 | 2h | 0973545210301 | T0+75 |
| 201 | 6.22.2 | A0203W52 - BUNDLE | 2h | 2025-05-26 11:00 | 2025-05-26 13:00 | 62.5d |  | Montador 4 | 2h | 0973545210302 | T0+75 |
| 202 | 6.22.3 | A0203W53 - BUNDLE | 2h | 2025-05-26 15:00 | 2025-05-26 17:00 | 62.25d |  | Montador 4 | 2h | 0973545210303 | T0+75 |
| 203 | 6.22.4 | A0203W54 - BUNDLE | 2h | 2025-05-26 17:00 | 2025-05-26 19:00 | 62d |  | Montador 4 | 2h | 0973545210304 | T0+75 |
| 204 | 6.22.5 | A0203W55 - BUNDLE | 2h | 2025-05-27 09:00 | 2025-05-27 11:00 | 61.75d |  | Montador 4 | 2h | 0973545210305 | T0+76 |
| 205 | 6.22.6 | A0203W56 - BUNDLE | 2h | 2025-05-27 11:00 | 2025-05-27 13:00 | 61.5d |  | Montador 4 | 2h | 0973545210306 | T0+76 |
| 206 | 6.22.7 | A0203W57 - BUNDLE | 2h | 2025-05-27 15:00 | 2025-05-27 17:00 | 61.25d |  | Montador 4 | 2h | 0973545210307 | T0+76 |
| 207 | 6.22.8 | A0203W58 - BUNDLE | 2h | 2025-05-27 17:00 | 2025-05-27 19:00 | 61d |  | Montador 4 | 2h | 0973545210308 | T0+76 |
| 208 | 6.22.9 | A0203W59 - BUNDLE | 2h | 2025-05-28 09:00 | 2025-05-28 11:00 | 60.75d |  | Montador 4 | 2h | 0973545210401 | T0+77 |
| 209 | 6.22.10 | A0203W60 - BUNDLE | 4h | 2025-05-28 11:00 | 2025-05-28 17:00 | 60.25d |  | Montador 4 | 4h | 0973545210501 | T0+77 |
| 210 | 6.22.11 | A0203W61 - BUNDLE | 4h | 2025-05-28 17:00 | 2025-05-29 11:00 | 59.75d |  | Montador 4 | 4h | 0973545210601 | T0+77 |
| 211 | 6.22.12 | A0203W62 - BUNDLE | 4h | 2025-05-29 11:00 | 2025-05-29 17:00 | 59.25d |  | Montador 4 | 4h | 0973545210701 | T0+78 |
| 212 | 6.22.13 | A0203W63 - BUNDLE | 4h | 2025-05-29 17:00 | 2025-05-30 11:00 | 58.75d |  | Montador 4 | 4h | 0973545210801 | T0+78 |
| 213 | 6.22.14 | A0203W64 - BUNDLE | 4h | 2025-05-30 11:00 | 2025-05-30 19:00 | 58d |  | Montador 4 | 4h | 0973545210901 | T0+79 |
| 214 | 6.22.15 | A0203W65 - BUNDLE | 4h | 2025-06-02 09:00 | 2025-06-02 13:00 | 57.5d |  | Montador 4 | 4h | 0973545210902 | T0+82 |
| 215 | 6.22.16 | A0203W66 - BUNDLE | 4h | 2025-06-02 15:00 | 2025-06-02 19:00 | 57d |  | Montador 4 | 4h | 0973545210903 | T0+82 |

| ID | WBS | Task | Duration | Start | Finish | Total slack | Constraint | Resources | Work | Código INDRA | Fecha relativa (en días) |
| --- | --- | --- | --- | --- | --- | --- | --- | --- | --- | --- | --- |
| 216 | 6.23 | **CABLE SET DACS** | 7.5d | 2025-05-23 09:00 | 2025-06-03 13:00 | 56.5d |  |  | 48h | 0973525411000 |  |
| 217 | 6.23.1 | W301 - BUNDLE | 4h | 2025-05-23 09:00 | 2025-05-23 13:00 | 63.5d | start no earlier than 2025-05-23 09:00 | Montador 3 | 4h | 0973545030101 | T0+72 |
| 218 | 6.23.2 | W302 - BUNDLE | 4h | 2025-05-23 15:00 | 2025-05-23 19:00 | 63d | start no earlier than 2025-05-23 09:00 | Montador 3 | 4h | 0973545030201 | T0+72 |
| 219 | 6.23.3 | W303 - BUNDLE | 4h | 2025-05-26 11:00 | 2025-05-26 17:00 | 62.25d | start no earlier than 2025-05-23 09:00 | Montador 3 | 4h | 0973545030301 | T0+75 |
| 220 | 6.23.4 | W304 - BUNDLE | 4h | 2025-05-26 17:00 | 2025-05-27 11:00 | 61.75d | start no earlier than 2025-05-23 09:00 | Montador 3 | 4h | 0973545030401 | T0+75 |
| 221 | 6.23.5 | W305 - BUNDLE | 4h | 2025-05-27 11:00 | 2025-05-27 17:00 | 61.25d | start no earlier than 2025-05-23 09:00 | Montador 3 | 4h | 0973545030402 | T0+76 |
| 222 | 6.23.6 | W306 - BUNDLE | 4h | 2025-05-27 17:00 | 2025-05-28 11:00 | 60.75d | start no earlier than 2025-05-23 09:00 | Montador 3 | 4h | 0973545030403 | T0+76 |
| 223 | 6.23.7 | W307 - BUNDLE | 4h | 2025-05-28 11:00 | 2025-05-28 17:00 | 60.25d | start no earlier than 2025-05-23 09:00 | Montador 3 | 4h | 0973545030404 | T0+77 |
| 224 | 6.23.8 | W308 - BUNDLE | 4h | 2025-05-28 17:00 | 2025-05-29 11:00 | 59.75d | start no earlier than 2025-05-23 09:00 | Montador 3 | 4h | 0973545030405 | T0+77 |
| 225 | 6.23.9 | W309 - BUNDLE | 4h | 2025-06-03 09:00 | 2025-06-03 13:00 | 56.5d | start no earlier than 2025-05-30 15:00 | Montador 4 | 4h | 0973545030406 | T0+83 |
| 226 | 6.23.10 | W310 - BUNDLE | 4h | 2025-05-29 11:00 | 2025-05-29 17:00 | 59.25d | start no earlier than 2025-05-23 09:00 | Montador 3 | 4h | 0973545030407 | T0+78 |
| 227 | 6.23.11 | W311 - BUNDLE | 4h | 2025-05-29 17:00 | 2025-05-30 11:00 | 58.75d | start no earlier than 2025-05-23 09:00 | Montador 3 | 4h | 0973545031101 | T0+78 |
| 228 | 6.23.12 | W312 - BUNDLE | 4h | 2025-05-30 11:00 | 2025-05-30 17:00 | 58.25d | start no earlier than 2025-05-23 09:00 | Montador 3 | 4h | 0973545031102 | T0+79 |
| 229 | 6.24 | **DRAWBRIDGE** | 13.75d | 2025-05-27 09:00 | 2025-06-13 17:00 | 48.25d |  |  | 110h | 0973525310000.00 |  |
| 230 | 6.24.1 | Drawbridge CTRL Unit (DBCU) | 100h | 2025-05-27 09:00 | 2025-06-12 13:00 | 49.5d | start no earlier than 2025-05-27 09:00 | Montador 2 | 100h | 0973525310100.00 | T0+76 |
| 231 | 6.24.2 | SMOKE CONTROL BOX | 1d | 2025-06-12 15:00 | 2025-06-13 13:00 | 48.5d | start no earlier than 2025-06-12 15:00 | Montador 2 | 8h | 0973525310200.00 | T0+92 |
| 232 | 6.24.3 | YELLOW EMERGENCY STOP | 2h | 2025-06-13 15:00 | 2025-06-13 17:00 | 48.25d | start no earlier than 2025-06-13 15:00 | Montador 2 | 2h | 0972825311200 | T0+93 |
| 233 | 6.25 | **Paneles Cabina** | 86.88d | 2025-03-12 09:00 | 2025-07-10 18:00 | 29.12d |  |  | 1141h |  |  |
| 234 | 6.25.1 | **LEFT CONSOLE** | 2d | 2025-03-12 09:00 | 2025-03-13 19:00 | 114d |  |  | 16h | 0973525030000.00 |  |
| 235 | 6.25.1.1 | HAND MIC PANEL CAPT | 8h | 2025-03-12 09:00 | 2025-03-12 19:00 | 115d |  | Montador 5 | 8h | 0973525030500.00 | T0+0 |
| 236 | 6.25.1.2 | HEADSET PANEL FOURTH OCCUPANT | 8h | 2025-03-13 09:00 | 2025-03-13 19:00 | 114d |  | Montador 5 | 8h | 0973525031000.00 | T0+1 |
| 237 | 6.25.2 | **RIGHT CONSOLE** | 2d | 2025-03-14 09:00 | 2025-03-17 19:00 | 112d |  |  | 16h | 0973525060000.00 |  |
| 238 | 6.25.2.1 | HAND MIC PANEL FO | 8h | 2025-03-14 09:00 | 2025-03-14 19:00 | 113d |  | Montador 5 | 8h | 0973525060500.00 | T0+2 |
| 239 | 6.25.2.2 | AUDIO CONNECTION THIRD OCCUPANT | 8h | 2025-03-17 09:00 | 2025-03-17 19:00 | 112d |  | Montador 5 | 8h | 0973525060900.00 | T0+5 |

| ID | WBS | Task | Duration | Start | Finish | Total slack | Constraint | Resources | Work | Código INDRA | Fecha relativa (en días) |
| --- | --- | --- | --- | --- | --- | --- | --- | --- | --- | --- | --- |
| 240 | 6.25.3 | **MAIN INSTRUMENT PANEL** | 13.5d | 2025-03-18 09:00 | 2025-04-04 13:00 | 98.5d |  |  | 108h | 0973525070000.00 |  |
| 241 | 6.25.3.1 | LIGHTING/LOUDSPEAKER CP CAPT | 32h | 2025-03-18 09:00 | 2025-03-21 19:00 | 108d |  | Montador 5 | 32h | 0973525070100.00 | T0+6 |
| 242 | 6.25.3.2 | CENTER INSTRUMENT PANEL RIGHT | 4h | 2025-03-24 09:00 | 2025-03-24 13:00 | 107.5d |  | Montador 5 | 4h | 0973525070700.00 | T0+12 |
| 243 | 6.25.3.3 | LANDING GEAR CONTROL&INDICATOR PANEL | 32h | 2025-03-24 15:00 | 2025-03-28 13:00 | 103.5d |  | Montador 5 | 32h | 0973525072400.00 | T0+12 |
| 244 | 6.25.3.4 | CENTER INSTRUMENT PANEL LEFT | 4h | 2025-03-28 15:00 | 2025-03-28 19:00 | 103d |  | Montador 5 | 4h | 0973525070800.00 | T0+16 |
| 245 | 6.25.3.5 | TERR ON ND PANEL | 4h | 2025-03-31 09:00 | 2025-03-31 13:00 | 102.5d |  | Montador 5 | 4h | 0973525073300.00 | T0+19 |
| 246 | 6.25.3.6 | LIGHTING/LOUDSPEAKER CP F/O | 32h | 2025-03-31 15:00 | 2025-04-04 13:00 | 98.5d |  | Montador 5 | 32h | 0973525071300.00 | T0+19 |
| 247 | 6.25.4 | **PEDESTAL** | 15.5d | 2025-04-04 15:00 | 2025-04-25 19:00 | 83d |  |  | 124h | 0973525090000.00 |  |
| 248 | 6.25.4.1 | FLOOD LIGHT&INTEGRAL LT PANEL | 8h | 2025-04-04 15:00 | 2025-04-07 13:00 | 97.5d |  | Montador 5 | 8h | 0973525091300.00 | T0+23 |
| 249 | 6.25.4.2 | FLOOD LIGHT PANEL | 8h | 2025-04-07 15:00 | 2025-04-08 13:00 | 96.5d |  | Montador 5 | 8h | 0973525091400.00 | T0+26 |
| 250 | 6.25.4.3 | COCKPIT DOOR PANEL | 8h | 2025-04-08 15:00 | 2025-04-09 13:00 | 95.5d |  | Montador 5 | 8h | 0973525091800.00 | T0+27 |
| 251 | 6.25.4.4 | SWITCHING PANEL | 32h | 2025-04-09 15:00 | 2025-04-15 13:00 | 91.5d |  | Montador 5 | 32h | 0973525092100.00 | T0+28 |
| 252 | 6.25.4.5 | ENGINE PANEL | 32h | 2025-04-15 15:00 | 2025-04-21 13:00 | 87.5d |  | Montador 5 | 32h | 0973525092300.00 | T0+34 |
| 253 | 6.25.4.6 | RUD TRIM&PARKING BRAKE PANEL | 32h | 2025-04-21 15:00 | 2025-04-25 13:00 | 83.5d |  | Montador 5 | 32h | 0973525092400.00 | T0+40 |
| 254 | 6.25.4.7 | COCKPIT HANDSET ASSEMBLY | 4h | 2025-04-25 15:00 | 2025-04-25 19:00 | 83d |  | Montador 5 | 4h | 0971725082600 | T0+44 |
| 255 | 6.25.5 | **GLARESHIELD** | 8d | 2025-04-28 09:00 | 2025-05-07 19:00 | 75d |  |  | 64h | 0973525100000.00 |  |
| 256 | 6.25.5.1 | GLARESHIELD CAPT | 32h | 2025-04-28 09:00 | 2025-05-01 19:00 | 79d |  | Montador 5 | 32h | 0973525100100.00 | T0+47 |
| 257 | 6.25.5.2 | GLARESHIELD F/O | 32h | 2025-05-02 09:00 | 2025-05-07 19:00 | 75d |  | Montador 5 | 32h | 0973525100200.00 | T0+51 |
| 258 | 6.25.6 | **OVERHEAD PANEL** | 35.62d | 2025-05-08 09:00 | 2025-06-26 16:00 | 39.38d |  |  | 485h | 0973525110000.00 |  |
| 259 | 6.25.6.1 | LEFT LATERAL PANEL | 32h | 2025-05-08 09:00 | 2025-05-13 19:00 | 71d |  | Montador 5 | 32h | 0973525110100.00 | T0+57 |
| 260 | 6.25.6.2 | RIGHT LATERAL PANEL | 32h | 2025-05-14 09:00 | 2025-05-19 19:00 | 67d |  | Montador 5 | 32h | 0973525110200.00 | T0+63 |
| 261 | 6.25.6.3 | LEFT FLIGHT CONTROL PANEL | 32h | 2025-05-20 09:00 | 2025-05-23 19:00 | 63d |  | Montador 5 | 32h | 0973525110300.00 | T0+69 |
| 262 | 6.25.6.4 | RIGHT FLIGHT CONTROL PANEL | 32h | 2025-06-09 09:00 | 2025-06-12 19:00 | 49d | start no earlier than 2025-06-09 09:00 | Montador 4 | 32h | 0973525110400.00 | T0+89 |
| 263 | 6.25.6.5 | SYSTEMS PANEL | 32h | 2025-05-26 09:00 | 2025-05-29 19:00 | 59d |  | Montador 5 | 32h | 0973525110500.00 | T0+75 |
| 264 | 6.25.6.6 | PASSENGER ADRESS PANEL | 8h | 2025-05-30 09:00 | 2025-05-30 19:00 | 58d |  | Montador 5 | 8h | 0973525110600.00 | T0+79 |
| 265 | 6.25.6.7 | AIR COND PANEL | 32h | 2025-06-10 09:00 | 2025-06-13 19:00 | 48d | start no earlier than 2025-06-10 09:00 | Montador 3 | 32h | 0973525110700.00 | T0+90 |
| 266 | 6.25.6.8 | ELEC PANEL | 32h | 2025-06-13 09:00 | 2025-06-18 19:00 | 45d | start no earlier than 2025-06-13 09:00 | Montador 4 | 32h | 0973525110800.00 | T0+93 |
| 267 | 6.25.6.9 | HYD/FUEL PANEL | 32h | 2025-06-02 09:00 | 2025-06-05 19:00 | 54d | start no earlier than 2025-06-02 09:00 | Montador 3 | 32h | 0973525110900.00 | T0+82 |
| 268 | 6.25.6.10 | CTRL AND INDICATING PANEL LT | 8h | 2025-06-02 09:00 | 2025-06-02 19:00 | 57d |  | Montador 5 | 8h | 0973525111000.00 | T0+82 |
| 269 | 6.25.6.11 | CIRCUIT BREAKER PANEL | 60h | 2025-06-03 09:00 | 2025-06-12 13:00 | 49.5d |  | Montador 5 | 60h | 0973525111100.00 | T0+83 |
| 270 | 6.25.6.12 | MAINTENANCE PANEL | 32h | 2025-06-03 15:00 | 2025-06-19 13:00 | 44.5d | start no earlier than 2025-06-02 09:00 | Montador 4 | 32h | 0973525111200.00 | T0+83 |
| 271 | 6.25.6.13 | LEFT READING LIGHT PANEL | 8h | 2025-06-04 18:00 | 2025-06-05 18:00 | 54.12d | start no earlier than 2025-06-04 18:00 | Montador 1 | 8h | 0973525111500.00 | T0+84 |
| 272 | 6.25.6.14 | RIGHT READING LIGHT PANEL | 8h | 2025-06-05 18:00 | 2025-06-06 18:00 | 53.12d | start no earlier than 2025-06-05 18:00 | Montador 1 | 8h | 0973525111600.00 | T0+85 |
| 273 | 6.25.6.15 | GND HF DATA LINK | 8h | 2025-06-13 16:00 | 2025-06-16 16:00 | 47.38d | start no earlier than 2025-06-13 16:00 | Montador 5 | 8h | 0973525111700.00 | T0+93 |
| 274 | 6.25.6.16 | FIRE PANEL-ENGINE APU | 32h | 2025-06-20 16:00 | 2025-06-26 16:00 | 39.38d | start no earlier than 2025-06-20 16:00 | Montador 5 | 32h | 0973525112000.00 | T0+100 |
| 275 | 6.25.6.17 | CONTROL-COCKPIT SYSTEM | 8h | 2025-06-09 09:00 | 2025-06-09 19:00 | 52d | start no earlier than 2025-06-09 09:00 | Montador 3 | 8h | 0973525112300.00 | T0+89 |
| 276 | 6.25.6.18 | AUDIO CONNECTION PANEL F/O | 8h | 2025-06-06 09:00 | 2025-06-06 19:00 | 53d | start no earlier than 2025-06-06 09:00 | Montador 3 | 8h | 0973525113000.00 | T0+86 |
| 277 | 6.25.6.19 | AUDIO CONNECTION PANEL CAPT | 8h | 2025-06-19 15:00 | 2025-06-20 13:00 | 43.5d | start no earlier than 2025-06-06 09:00 | Montador 4 | 8h | 0973525113100.00 | T0+99 |
| 278 | 6.25.6.20 | CAMERA DBS ASSY | 1h | 2025-06-12 15:00 | 2025-06-12 16:00 | 49.38d |  | Montador 5 | 1h | 0973525133000.00 | T0+92 |
| 279 | 6.25.6.21 | IND LIGHTED ICING | 8h | 2025-06-12 16:00 | 2025-06-13 16:00 | 48.38d | start no earlier than 2025-06-12 16:00 | Montador 5 | 8h | 0973525139000.00 | T0+92 |
| 280 | 6.25.6.22 | ADIRS PANEL | 32h | 2025-06-16 16:00 | 2025-06-20 16:00 | 43.38d | start no earlier than 2025-06-16 16:00 | Montador 5 | 32h | 0973525140000.00 | T0+96 |

| ID | WBS | Task | Type | Duration | Start | Finish | Predecessors | Total slack | Free slack | Constraint | Resources | Work | Código INDRA | Fecha relativa (en días) |
| --- | --- | --- | --- | --- | --- | --- | --- | --- | --- | --- | --- | --- | --- | --- |
| 281 | 6.25.7 | **C/B CABIN PANEL** |  | 24d | 2025-06-06 18:00 | 2025-07-10 18:00 |  | 29.12d |  |  |  | 328h | 0973525135000.00 |  |
| 282 | 6.25.7.1 | REAR CB PANEL#1 |  | 80h | 2025-06-06 18:00 | 2025-06-20 18:00 |  | 43.12d |  | start no earlier than 2025-06-06 18:00 | Montador 1 | 80h | 0973525140100.00 | T0+86 |
| 283 | 6.25.7.2 | REAR CB PANEL#2 |  | 80h | 2025-06-20 18:00 | 2025-07-04 18:00 |  | 33.12d |  | start no earlier than 2025-06-20 18:00 | Montador 1 | 80h | 0973525140200.00 | T0+100 |
| 284 | 6.25.7.3 | REAR CB PANEL#3 |  | 32h | 2025-07-04 18:00 | 2025-07-10 18:00 |  | 29.12d |  | start no earlier than 2025-07-04 18:00 | Montador 1 | 32h | 0973525140300.00 | T0+114 |
| 285 | 6.25.7.4 | REAR CB PANEL#4 |  | 8h | 2025-06-27 16:00 | 2025-06-30 16:00 |  | 37.38d |  | start no earlier than 2025-06-27 16:00 | Montador 5 | 8h | 0973525140400.00 | T0+107 |
| 286 | 6.25.7.5 | REAR CB PANEL#5 |  | 8h | 2025-06-26 16:00 | 2025-06-27 16:00 |  | 38.38d |  | start no earlier than 2025-06-26 16:00 | Montador 5 | 8h | 0973525140500.00 | T0+106 |
| 287 | 6.25.7.6 | CB DISTRIBUTION PANEL #1 |  | 40h | 2025-06-13 17:00 | 2025-06-20 17:00 |  | 43.25d |  | start no earlier than 2025-06-13 17:00 | Montador 2 | 40h | 0973525140600.00 | T0+93 |
| 288 | 6.25.7.7 | CB DISTRIBUTION PANEL #2 |  | 40h | 2025-06-20 17:00 | 2025-06-27 17:00 |  | 38.25d |  | start no earlier than 2025-06-20 17:00 | Montador 2 | 40h | 0973525140700.00 | T0+100 |
| 289 | 6.25.7.8 | CB DISTRIBUTION PANEL #3 |  | 40h | 2025-06-27 17:00 | 2025-07-04 17:00 |  | 33.25d |  | start no earlier than 2025-06-27 17:00 | Montador 2 | 40h | 0973525140800.00 | T0+107 |
| 290 | 6.26 | **CABLE SET PD#3** |  | 15d | 2025-06-16 09:00 | 2025-07-04 19:00 |  | 33d |  |  |  | 120h | 0973524201000 |  |
| 291 | 6.26.1 | W471 - FIRE IN |  | 10h | 2025-06-16 09:00 | 2025-06-17 11:00 |  | 46.75d |  | start no earlier than 2025-06-16 09:00 | Montador 3 | 10h | 0973545047100 | T0+96 |
| 292 | 6.26.2 | W472 - DBCU |  | 10h | 2025-06-17 11:00 | 2025-06-18 13:00 |  | 45.5d |  | start no earlier than 2025-06-16 09:00 | Montador 3 | 10h | 0973545047200 | T0+97 |
| 293 | 6.26.3 | W473 - EMERGENCY |  | 10h | 2025-06-18 15:00 | 2025-06-19 17:00 |  | 44.25d |  | start no earlier than 2025-06-16 09:00 | Montador 3 | 10h | 0973545047300 | T0+98 |
| 294 | 6.26.4 | W474 - EM PWR RACK |  | 10h | 2025-06-19 17:00 | 2025-06-20 19:00 |  | 43d |  | start no earlier than 2025-06-16 09:00 | Montador 3 | 10h | 0973545047400 | T0+99 |
| 295 | 6.26.5 | W475 - AIR FLOW/DB |  | 10h | 2025-06-23 09:00 | 2025-06-24 11:00 |  | 41.75d |  | start no earlier than 2025-06-16 09:00 | Montador 3 | 10h | 0973545047500 | T0+103 |
| 296 | 6.26.6 | W476 - SEATS |  | 10h | 2025-06-24 11:00 | 2025-06-25 13:00 |  | 40.5d |  | start no earlier than 2025-06-23 09:00 | Montador 3 | 10h | 0973545047600 | T0+104 |
| 297 | 6.26.7 | W478 - FIRE OUT |  | 10h | 2025-06-26 17:00 | 2025-06-27 19:00 |  | 38d |  | start no earlier than 2025-06-26 17:00 | Montador 3 | 10h | 0973545047800 | T0+106 |
| 298 | 6.26.8 | W480 - CLS STOP |  | 10h | 2025-06-25 15:00 | 2025-06-26 17:00 |  | 39.25d |  | start no earlier than 2025-06-16 09:00 | Montador 3 | 10h | 0973545048000 | T0+105 |
| 299 | 6.26.9 | W481 - OBSERVER |  | 10h | 2025-06-30 09:00 | 2025-07-01 11:00 |  | 36.75d |  | start no earlier than 2025-06-30 09:00 | Montador 3 | 10h | 0973545048100 | T0+110 |
| 300 | 6.26.10 | W482 - IOS#1 |  | 10h | 2025-07-01 11:00 | 2025-07-02 13:00 |  | 35.5d |  | start no earlier than 2025-07-01 11:00 | Montador 3 | 10h | 0973545048200 | T0+111 |
| 301 | 6.26.11 | W487 - 400 HZ |  | 10h | 2025-07-02 15:00 | 2025-07-03 17:00 |  | 34.25d |  | start no earlier than 2025-06-30 09:00 | Montador 3 | 10h | 0973545048700 | T0+112 |
| 302 | 6.26.12 | W488 - 400 HZ |  | 10h | 2025-07-03 17:00 | 2025-07-04 19:00 |  | 33d |  | start no earlier than 2025-07-02 15:00 | Montador 3 | 10h | 0973545048800 | T0+113 |
| 303 | 6.27 | **CABLE SET RJ45 EEQ#2** |  | 4.79d | 2025-06-30 17:00 | 2025-07-07 15:18 |  | 32.46d |  |  |  | 8h | 0973524200600 |  |
| 304 | 6.27.1 | CABLE SET RJ45 EEQ#2 |  | 1d | 2025-06-30 17:00 | 2025-07-01 17:00 |  | 36.25d | 0d | start no earlier than 2025-06-30 17:00 | Montador 4 | 8h | 0973524200600 | T0+110 |
| 305 | 6.27.2 | KVM AVICOM | milestone | 0h | 2025-07-04 17:00 | 2025-07-04 17:00 | 304 | 33.25d |  | start no earlier than 2025-07-04 17:00 |  |  | 0973544200622 | T0+114 |
| 306 | 6.27.3 | KVM CLS | milestone | 0h | 2025-07-07 15:18 | 2025-07-07 15:18 | 304 | 32.46d |  | start no earlier than 2025-07-07 15:18 |  |  | 0973544200625 | T0+117 |
| 307 | 6.27.4 | KVM EGPWS | milestone | 0h | 2025-07-04 17:36 | 2025-07-04 17:36 | 304 | 33.17d |  | start no earlier than 2025-07-04 17:36 |  |  | 0973544200623 | T0+114 |
| 308 | 6.27.5 | KVM RTIO | milestone | 0h | 2025-07-01 17:00 | 2025-07-01 17:00 | 304 | 36.25d |  |  |  |  | 0973544200624 | T0+111 |
| 309 | 6.27.6 | LAN AVICOM MNT | milestone | 0h | 2025-07-04 17:54 | 2025-07-04 17:54 | 304 | 33.14d |  | start no earlier than 2025-07-04 17:54 |  |  | 0973544200606 | T0+114 |
| 310 | 6.27.7 | LAN AVICOM RT | milestone | 0h | 2025-07-04 18:12 | 2025-07-04 18:12 | 304 | 33.1d |  | start no earlier than 2025-07-04 18:12 |  |  | 0973544200601 | T0+114 |
| 311 | 6.27.8 | LAN CLS MNT | milestone | 0h | 2025-07-07 10:54 | 2025-07-07 10:54 | 304 | 32.76d |  | start no earlier than 2025-07-07 10:54 |  |  | 0973544200609 | T0+117 |
| 312 | 6.27.9 | LAN CLS RT | milestone | 0h | 2025-07-07 11:12 | 2025-07-07 11:12 | 304 | 32.73d |  | start no earlier than 2025-07-07 11:12 |  |  | 0973544200604 | T0+117 |
| 313 | 6.27.10 | LAN DBFCAM MNT | milestone | 0h | 2025-07-07 09:06 | 2025-07-07 09:06 | 304 | 32.99d |  | start no earlier than 2025-07-07 09:06 |  |  | 0973544200611 | T0+117 |
| 314 | 6.27.11 | LAN EGPWS MNT | milestone | 0h | 2025-07-04 18:30 | 2025-07-04 18:30 | 304 | 33.06d |  | start no earlier than 2025-07-04 18:30 |  |  | 0973544200607 | T0+114 |
| 315 | 6.27.12 | LAN EGPWS RT | milestone | 0h | 2025-07-04 18:48 | 2025-07-04 18:48 | 304 | 33.02d |  | start no earlier than 2025-07-04 18:48 |  |  | 0973544200602 | T0+114 |
| 316 | 6.27.13 | LAN EQUALIZER RT | milestone | 0h | 2025-07-07 09:24 | 2025-07-07 09:24 | 304 | 32.95d |  | start no earlier than 2025-07-07 09:24 |  |  | 0973544200605 | T0+117 |
| 317 | 6.27.14 | LAN RTIO MNT | milestone | 0h | 2025-07-07 09:42 | 2025-07-07 09:42 | 304 | 32.91d |  | start no earlier than 2025-07-07 09:42 |  |  | 0973544200608 | T0+117 |
| 318 | 6.27.15 | LAN RTIO RT | milestone | 0h | 2025-07-07 10:00 | 2025-07-07 10:00 | 304 | 32.88d |  | start no earlier than 2025-07-07 10:00 |  |  | 0973544200603 | T0+117 |
| 319 | 6.27.16 | LAN TEMP MNT | milestone | 0h | 2025-07-07 10:18 | 2025-07-07 10:18 | 304 | 32.84d |  | start no earlier than 2025-07-07 10:18 |  |  | 0973544200610 | T0+117 |
| 320 | 6.27.17 | RED RTIO #1 | milestone | 0h | 2025-07-07 10:36 | 2025-07-07 10:36 | 304 | 32.8d |  | start no earlier than 2025-07-07 10:36 |  |  | 0973544200615 | T0+117 |
| 321 | 6.27.18 | RED RTIO #2 | milestone | 0h | 2025-07-07 12:06 | 2025-07-07 12:06 | 304 | 32.61d |  | start no earlier than 2025-07-07 12:06 |  |  | 0973544200616 | T0+117 |
| 322 | 6.27.19 | RED RTIO #3 | milestone | 0h | 2025-07-07 11:30 | 2025-07-07 11:30 | 304 | 32.69d |  | start no earlier than 2025-07-07 11:30 |  |  | 0973544200617 | T0+117 |
| 323 | 6.27.20 | RED RTIO #4 | milestone | 0h | 2025-07-07 11:48 | 2025-07-07 11:48 | 304 | 32.65d |  | start no earlier than 2025-07-07 11:48 |  |  | 0973544200618 | T0+117 |
| 324 | 6.27.21 | RED RTIO #5 | milestone | 0h | 2025-07-07 12:24 | 2025-07-07 12:24 | 304 | 32.58d |  | start no earlier than 2025-07-07 12:24 |  |  | 0973544200619 | T0+117 |
| 325 | 6.27.22 | RED RTIO #6 | milestone | 0h | 2025-07-07 12:42 | 2025-07-07 12:42 | 304 | 32.54d |  | start no earlier than 2025-07-07 12:42 |  |  | 0973544200620 | T0+117 |
| 326 | 6.27.23 | RED RTIO COM | milestone | 0h | 2025-07-07 12:42 | 2025-07-07 12:42 | 304 | 32.54d |  | start no earlier than 2025-07-07 12:42 |  |  | 0973544200621 | T0+117 |

| ID | WBS | Task | Duration | Start | Finish | Predecessors | Total slack | Free slack | Constraint | Resources | Work | Código INDRA | Fecha relativa (en días) |
| --- | --- | --- | --- | --- | --- | --- | --- | --- | --- | --- | --- | --- | --- |
| 327 | 6.28 | **IOS STATION#1** | 4d | 2025-06-20 15:00 | 2025-06-26 13:00 |  | 39.5d |  |  |  | 32h | 0973525240000.00 |  |
| 328 | 6.28.1 | IOS CONNECTION BOX | 1d | 2025-06-20 15:00 | 2025-06-23 13:00 |  | 42.5d |  | start no earlier than 2025-06-19 11:00 | Montador 4 | 8h | 0973525240200.00 | T0+100 |
| 329 | 6.28.2 | IOS Emergency Panel | 4h | 2025-06-23 15:00 | 2025-06-23 19:00 |  | 42d |  | start no earlier than 2025-06-20 11:00 | Montador 4 | 4h | 0973525240300.00 | T0+103 |
| 330 | 6.28.3 | FFIOS Panel | 1d | 2025-06-24 09:00 | 2025-06-24 19:00 |  | 41d |  | start no earlier than 2025-06-20 17:00 | Montador 4 | 8h | 0973525240400.00 | T0+104 |
| 331 | 6.28.4 | Seat Panel | 4h | 2025-06-25 09:00 | 2025-06-25 13:00 |  | 40.5d |  | start no earlier than 2025-06-23 17:00 | Montador 4 | 4h | 0972825240800.00 | T0+105 |
| 332 | 6.28.5 | IOS Audio Connection Panel | 1d | 2025-06-25 15:00 | 2025-06-26 13:00 |  | 39.5d |  | start no earlier than 2025-06-24 11:00 | Montador 4 | 8h | 0973525240600.00 | T0+105 |
| 333 | 6.29 | **OBSERVER SEAT** | 2.25d | 2025-06-26 15:00 | 2025-06-30 17:00 |  | 37.25d |  |  |  | 18h | 0973525270800.00 |  |
| 334 | 6.29.1 | Audio and Seat Panel | 1d | 2025-06-26 15:00 | 2025-06-27 13:00 |  | 38.5d |  | start no earlier than 2025-06-25 11:00 | Montador 4 | 8h | 0973525270900.00 | T0+106 |
| 335 | 6.29.2 | AFTOUT EMO | 2h | 2025-06-27 15:00 | 2025-06-27 17:00 |  | 38.25d |  | start no earlier than 2025-06-26 11:00 | Montador 4 | 2h | 0972825271100.00 | T0+107 |
| 336 | 6.29.3 | CTRL& EM PANEL | 4h | 2025-06-27 17:00 | 2025-06-30 11:00 |  | 37.75d |  | start no earlier than 2025-06-26 15:00 | Montador 4 | 4h | 0972825271200.00 | T0+107 |
| 337 | 6.29.4 | FIRE ALARM PANEL | 4h | 2025-06-30 11:00 | 2025-06-30 17:00 |  | 37.25d |  | start no earlier than 2025-06-27 09:00 | Montador 4 | 4h | 0972825272800.00 | T0+110 |
| 338 | 7 | **Instalación** | 43.38d | 2025-05-12 09:00 | 2025-07-10 12:00 |  | 29.62d |  |  |  | 820h |  |  |
| 339 | 7.1 | CABLE SET GROUND | 20h | 2025-05-12 09:00 | 2025-05-14 13:00 | 1 | 70.5d |  |  | Instalador 1 | 20h | 0973524430100 | T0+61 |
| 340 | 7.2 | ELECTRONIC EQUIP #1 | 14h | 2025-05-12 09:00 | 2025-05-13 17:00 | 1, 11 | 34.75d | 0d |  | Instalador 2 | 14h | 0973525190000.00 | T0+61 |
| 341 | 7.3 | ELECTRONIC EQUIP #2 | 14h | 2025-05-13 17:00 | 2025-05-15 13:00 | 1, 22 | 58.5d | 0d |  | Instalador 2 | 14h | 0973525200000.00 | T0+62 |
| 342 | 7.4 | ELECTRONIC EQUIP #3 | 10h | 2025-05-15 15:00 | 2025-05-16 17:00 | 1, 28 | 40.25d | 0d |  | Instalador 2 | 10h | 0973525210000.00 | T0+64 |
| 343 | 7.5 | ELECTRONIC EQUIP #4 | 10h | 2025-05-16 17:00 | 2025-05-19 19:00 | 1, 31 | 67d |  |  | Instalador 2 | 10h | 0973525220000.00 | T0+65 |
| 344 | 7.6 | BASEFRAME POWER STRIPS | 4h | 2025-05-14 15:00 | 2025-05-14 19:00 | 1 | 70d |  |  | Instalador 1 | 4h | 0973525300500.00 | T0+63 |
| 345 | 7.7 | BASEFRAME | 16h | 2025-05-15 09:00 | 2025-05-16 19:00 | 1 | 35d | 0d |  | Instalador 1 | 16h | 0973525300000.00 | T0+64 |
| 346 | 7.8 | CABLE SET POWER RACK | 32h | 2025-05-19 09:00 | 2025-05-22 19:00 | 2 | 64d |  |  | Instalador 1 | 32h | 0973524430000 | T0+68 |
| 347 | 7.9 | CABLE SET EEQ#1 | 12h | 2025-05-20 09:00 | 2025-05-21 13:00 | 340 | 65.5d |  |  | Instalador 2 | 12h | 0973524190000 | T0+69 |
| 348 | 7.10 | CABLE SET EEQ#2 | 12h | 2025-05-21 15:00 | 2025-05-22 19:00 | 341 | 64d |  |  | Instalador 2 | 12h | 0973524200000 | T0+70 |
| 349 | 7.11 | CABLE SET PD#1 | 12h | 2025-05-23 09:00 | 2025-05-26 13:00 | 340 | 36.38d | 3d |  | Instalador 2 | 12h | 0973524191400.00 | T0+72 |
| 350 | 7.12 | CABLE SET PD#2 | 12h | 2025-05-26 15:00 | 2025-05-27 19:00 | 340 | 34.88d | 1.5d |  | Instalador 2 | 12h | 0973524191500 | T0+75 |
| 351 | 7.13 | CABLE SET OVHDP | 12h | 2025-05-23 09:00 | 2025-05-26 13:00 | 340 | 36.38d | 3d |  | Instalador 1 | 12h | 0973524190300.00 | T0+72 |
| 352 | 7.14 | CABLE SET POWER EEQ#1 (CABLE SET RTIO) | 12h | 2025-05-26 15:00 | 2025-05-27 19:00 | 340 | 61d |  |  | Instalador 1 | 12h | 0973524190100 | T0+75 |
| 353 | 7.15 | CABLE SET MIP | 12h | 2025-05-28 09:00 | 2025-05-29 13:00 | 345 | 33.38d | 0d |  | Instalador 2 | 12h | 0973524300100.00 | T0+77 |
| 354 | 7.16 | CABLE SET BASEFRAME | 12h | 2025-05-28 09:00 | 2025-05-29 13:00 | 345 | 59.5d |  |  | Instalador 1 | 12h | 0973524300000 | T0+77 |
| 355 | 7.17 | CABLE SET CAN | 32h | 2025-05-29 15:00 | 2025-06-04 13:00 | 349, 350, 351, 353 | 33.38d | 3.5d |  | Instalador 2 | 32h | 0973524020000.00 | T0+78 |
| 356 | 7.18 | CABLE SET AVICOM | 4h | 2025-05-29 15:00 | 2025-05-29 19:00 | 341 | 59d |  |  | Instalador 1 | 4h | 0973524201800.00 | T0+78 |
| 357 | 7.19 | CABLE SET AVDP | 4h | 2025-05-30 09:00 | 2025-05-30 13:00 | 341 | 58.5d |  |  | Instalador 1 | 4h | 0973524201600 | T0+79 |
| 358 | 7.20 | CABLE SET ETH DISPLAY UNITS | 3h | 2025-05-30 15:00 | 2025-05-30 18:00 | 1 | 58.12d |  |  | Instalador 1 | 3h | 0973524070200 | T0+79 |
| 359 | 7.21 | CABLE SET PWR DISPLAY UNITS | 3h | 2025-05-30 18:00 | 2025-06-02 11:00 | 1 | 57.75d |  |  | Instalador 1 | 3h | 0973524070300 | T0+79 |
| 360 | 7.22 | CABLE SET COMMS DP | 6h | 2025-06-02 11:00 | 2025-06-02 19:00 | 342 | 57d |  |  | Instalador 1 | 6h | 0973524212100 | T0+82 |
| 361 | 7.23 | FLIGHT COMPARTMENT | 1d | 2025-06-03 09:00 | 2025-06-03 19:00 | 1 | 28d | 0d |  | Instalador 1 | 8h | 0973525020000.00 | T0+83 |
| 362 | 7.24 | COCKPIT FRAME | 8h | 2025-06-04 09:00 | 2025-06-04 19:00 | 1 | 55d |  |  | Instalador 1 | 8h | 0973525170000.00 | T0+84 |
| 363 | 7.25 | CLS | 12h | 2025-06-04 15:00 | 2025-06-05 19:00 | 1 | 54d |  |  | Instalador 2 | 12h | 0973525170100.00 | T0+84 |
| 364 | 7.26 | CABLE SET DACS | 16h | 2025-06-05 09:00 | 2025-06-06 19:00 | 361, 342 | 30.88d | 1d |  | Instalador 1 | 16h | 0973525411000 | T0+85 |
| 365 | 7.27 | CABLE SET DACS EEQ#3 | 8h | 2025-06-09 09:00 | 2025-06-09 19:00 | 361, 342 | 29.88d | 0d |  | Instalador 1 | 8h | 0973524210200 | T0+89 |
| 366 | 7.28 | MOTION SYSTEM | 20h | 2025-06-10 09:00 | 2025-06-12 13:00 | 355, 364, 365 | 29.88d | 0d |  | Instalador 1; Instalador 2; Instalador 3 | 60h | 0973525320000.00 | T0+90 |
| 367 | 7.29 | CARENADOS | 20h | 2025-06-12 15:00 | 2025-06-16 19:00 | 366 | 29.88d | 0d |  | Instalador 1; Instalador 2; Instalador 3 | 60h |  | T0+92 |
| 368 | 7.30 | DRAWBRIDGE | 20h | 2025-06-17 09:00 | 2025-06-19 13:00 | 367 | 29.88d | 0d |  | Instalador 1; Instalador 2; Instalador 3 | 60h | 0973525310000.00 | T0+97 |
| 369 | 7.31 | AIR CONDITIONING SYSTEM | 3d | 2025-06-19 15:00 | 2025-06-24 13:00 | 368 | 41.5d |  |  |  |  | 0973525400000.00 | T0+99 |

| ID | WBS | Task | Duration | Start | Finish | Predecessors | Total slack | Free slack | Resources | Work | Código INDRA | Fecha relativa (en días) |
| --- | --- | --- | --- | --- | --- | --- | --- | --- | --- | --- | --- | --- |
| 370 | 7.32 | **Paneles Cabina** | 5.62d | 2025-06-19 15:00 | 2025-06-27 10:00 | 368 | 38.88d | 0d |  | 45h |  |  |
| 371 | 7.32.1 | LEFT CONSOLE | 3h | 2025-06-19 15:00 | 2025-06-19 18:00 |  | 44.12d |  | Instalador 2 | 3h | 0973525030000.00 | T0+99 |
| 372 | 7.32.2 | LEFT INSTRUMENT PANEL | 1h | 2025-06-19 18:00 | 2025-06-19 19:00 |  | 44d |  | Instalador 2 | 1h | 0973525040000.00 | T0+99 |
| 373 | 7.32.3 | RIGHT INSTRUMENT PANEL | 1h | 2025-06-20 09:00 | 2025-06-20 10:00 |  | 43.88d |  | Instalador 2 | 1h | 0973525050000.00 | T0+100 |
| 374 | 7.32.4 | RIGHT CONSOLE | 4h | 2025-06-20 10:00 | 2025-06-20 16:00 |  | 43.38d |  | Instalador 2 | 4h | 0973525060000.00 | T0+100 |
| 375 | 7.32.5 | PEDESTAL | 4h | 2025-06-20 16:00 | 2025-06-23 10:00 |  | 42.88d |  | Instalador 2 | 4h | 0973525090000.00 | T0+100 |
| 376 | 7.32.6 | MAIN INSTRUMENT PANEL | 4h | 2025-06-23 10:00 | 2025-06-23 16:00 |  | 42.38d |  | Instalador 2 | 4h | 0973525070000.00 | T0+103 |
| 377 | 7.32.7 | GLARESHIELD | 4h | 2025-06-23 16:00 | 2025-06-24 10:00 |  | 41.88d |  | Instalador 2 | 4h | 0973525100000.00 | T0+103 |
| 378 | 7.32.8 | OVERHEAD PANEL | 4h | 2025-06-24 10:00 | 2025-06-24 16:00 |  | 41.38d |  | Instalador 2 | 4h | 0973525110000.00 | T0+104 |
| 379 | 7.32.9 | C/B CABIN PANEL | 4h | 2025-06-24 16:00 | 2025-06-25 10:00 |  | 40.88d |  | Instalador 2 | 4h | 0973525135000.00 | T0+104 |
| 380 | 7.32.10 | MISCELLANEOUS LIGHTING | 8h | 2025-06-25 10:00 | 2025-06-26 10:00 |  | 39.88d |  | Instalador 2 | 8h | 0973525150000.00 | T0+105 |
| 381 | 7.32.11 | MISCELLANEOUS EQUIPMENT | 8h | 2025-06-26 10:00 | 2025-06-27 10:00 |  | 38.88d |  | Instalador 2 | 8h | 0973525160000.00 | T0+106 |
| 382 | 7.33 | CABLE SET PD#3 | 20h | 2025-06-19 15:00 | 2025-06-23 19:00 | 368 | 42d |  | Instalador 1 | 20h | 0973524201000 | T0+99 |
| 383 | 7.34 | CABLE SET DRAWBRIDGE | 8h | 2025-06-24 09:00 | 2025-06-24 19:00 | 368 | 41d |  | Instalador 1 | 8h | 0973524310000 | T0+104 |
| 384 | 7.35 | PROCESSOR RACK #1 | 100h | 2025-05-22 15:00 | 2025-06-10 09:00 | 366SF | 39d | 0d | Instalador 3 | 100h | 0973525330000.00 | T0+71 |
| 385 | 7.36 | CABLE SET VIDEO DISPLAY UNITS | 3h | 2025-06-25 09:00 | 2025-06-25 12:00 | 384 | 40.62d |  | Instalador 1 | 3h | 0973524070100 | T0+105 |
| 386 | 7.37 | CABLE SET RJ45 EEQ#2 | 12h | 2025-06-25 12:00 | 2025-06-26 18:00 | 384 | 39.12d |  | Instalador 1 | 12h | 0973524200600 | T0+105 |
| 387 | 7.38 | CABLE SET LAN INTERCONNECTION | 12h | 2025-06-26 18:00 | 2025-06-30 12:00 | 384 | 37.62d |  | Instalador 1 | 12h | 0973524000100 | T0+106 |
| 388 | 7.39 | FIRE DETECTION | 40h | 2025-06-27 10:00 | 2025-07-04 10:00 | 368 | 32.88d | 0d | Instalador 2 | 40h | 0973525420000.00 | T0+107 |
| 389 | 7.40 | CABLE SET FIRE DETECTION | 8h | 2025-07-04 10:00 | 2025-07-07 10:00 | 388 | 32.88d |  | Instalador 2 | 8h | 0973524420000 | T0+114 |
| 390 | 7.41 | SMOKE GENERATION | 40h | 2025-06-30 12:00 | 2025-07-07 12:00 | 368 | 31.62d | 0d | Instalador 1 | 40h | 0973525410000.00 | T0+110 |
| 391 | 7.42 | CABLE SET SMOKE | 8h | 2025-07-07 12:00 | 2025-07-08 12:00 | 390 | 31.62d |  | Instalador 1 | 8h | 0973524410000 | T0+117 |
| 392 | 7.43 | IOS STATION#1 | 8h | 2025-07-08 12:00 | 2025-07-09 12:00 | 368 | 30.62d |  | Instalador 1 | 8h | 0973525240000.00 | T0+118 |
| 393 | 7.44 | OBSERVER SEAT | 8h | 2025-07-09 12:00 | 2025-07-10 12:00 | 368 | 29.62d |  | Instalador 1 | 8h | 0973525270800.00 | T0+119 |
| 394 | 7.45 | DEBRIEFING STATION | 8h | 2025-07-07 10:00 | 2025-07-08 10:00 | 368 | 31.88d |  | Instalador 2 | 8h | 0973525480000.00 | T0+117 |

| ID | WBS | Task | Type | Duration | Start | Finish | Total slack | Constraint | Código INDRA | Fecha relativa (en días) |
| --- | --- | --- | --- | --- | --- | --- | --- | --- | --- | --- |
| 395 | 8 | **Sistema Visual** |  | 30d | 2025-07-10 09:00 | 2025-08-20 19:00 | 0d |  |  |  |
| 396 | 8.1 | VISUAL DISPLAY SYSTEM |  | 30d | 2025-07-10 09:00 | 2025-08-20 19:00 | 0d | start no earlier than 2025-07-10 09:00 | 0973525290000.00 | T0+120 |
| 397 | 8.2 | CABLE SET VIDEO |  | 4h | 2025-07-10 09:00 | 2025-07-10 13:00 | 29.5d | start no earlier than 2025-07-10 09:00 | 0973524017000 | T0+120 |
| 398 | 8.3 | CABLE SET DISPLAY | milestone | 0d | 2025-07-10 09:00 | 2025-07-10 09:00 | 30d | start no earlier than 2025-07-10 09:00 | 0973524290000 | T0+120 |
| 399 | 8.4 | CABLE SET DISPLAY PROJECTION | milestone | 0d | 2025-07-10 09:00 | 2025-07-10 09:00 | 30d | start no earlier than 2025-07-10 09:00 | 0973523060000.00 | T0+120 |
| 400 | 8.5 | CABLE SET DISPLAY LAN | milestone | 0d | 2025-07-10 09:00 | 2025-07-10 09:00 | 30d | start no earlier than 2025-07-10 09:00 | 0973523062000.00 | T0+120 |
| 401 | 8.6 | CABLE SET OPTICAL BLENDING | milestone | 0d | 2025-07-10 09:00 | 2025-07-10 09:00 | 30d | start no earlier than 2025-07-10 09:00 | 0973523064000.00 | T0+120 |
| 402 | 8.7 | CABLE SET VACCUM | milestone | 0d | 2025-07-10 09:00 | 2025-07-10 09:00 | 30d | start no earlier than 2025-07-10 09:00 | 0973523066000.00 | T0+120 |
| 403 | 8.8 | CABLE SET DISPLAY POWER | milestone | 0d | 2025-07-10 09:00 | 2025-07-10 09:00 | 30d | start no earlier than 2025-07-10 09:00 | 0973523067000.00 | T0+120 |
| 404 | 8.9 | CABLE SET RELAY CARD | milestone | 0d | 2025-07-10 09:00 | 2025-07-10 09:00 | 30d | start no earlier than 2025-07-10 09:00 | 0973523068700 | T0+120 |
